# 01_CRONOGRAMA DE PROYECTO TCV_ITS APAZA LIMBERT

Schedule from MS Project, 2022-04-14 to 2022-07-12, status date 2022-05-21, A marks actual dates.

## Calendars

- Estándar: Mon-Fri 09:00-13:00, 15:00-19:00; Sat-Sun off.

## Schedule

| ID | WBS | Task | Type | Duration | Start | Finish | Predecessors | Complete | Remaining | Baseline start | Baseline finish | Baseline duration | Total slack | Text1 | Codigo_Doc |
| --- | --- | --- | --- | --- | --- | --- | --- | --- | --- | --- | --- | --- | --- | --- | --- |
| 1 | 1 | **SISTEMA DE MONITOREO DE VEHICULOS POR ITS (TCV)** |  | 64d | 2022-04-14 A | 2022-07-12 |  | 88% | 7.53d | 2022-04-14 | 2022-07-12 | 64d | 0d | 100% |  |
| 2 | 1.1 | **Diseñar e implementar un sistema de seguimiento por IA, red de sensores y control de viajes de vehículos a través de un sistema dinámico e inteligente del transporte público por una parada inteligente de un área limitada de la ciudad de El Alto.** |  | 11d | 2022-04-14 A | 2022-04-28 A |  | 100% |  | 2022-04-14 | 2022-04-28 | 11d |  | 100% |  |
| 3 | 1.1.1 | **ANALISIS** |  | 3d | 2022-04-14 A | 2022-04-18 A |  | 100% |  | 2022-04-14 | 2022-04-18 | 3d |  | 100% |  |
| 4 | 1.1.1.1 | **Busqueda de en relacion IOT-IA** |  | 1d | 2022-04-14 A | 2022-04-14 A |  | 100% |  | 2022-04-14 | 2022-04-14 | 1d |  | 100% |  |
| 5 | 1.1.1.1.1 | Analisis en modelos de plataformas IOT |  | 0.5d | 2022-04-14 A | 2022-04-14 A |  | 100% |  | 2022-04-14 | 2022-04-14 | 0.5d |  | 100% |  |
| 6 | 1.1.1.1.2 | Busqueda de modelos a usar en IA |  | 0.5d | 2022-04-14 A | 2022-04-14 A | 5 | 100% |  | 2022-04-14 | 2022-04-14 | 0.5d |  | 100% |  |
| 7 | 1.1.1.2 | **Analisis de paradas inteligentes** |  | 2d | 2022-04-15 A | 2022-04-18 A |  | 100% |  | 2022-04-15 | 2022-04-18 | 2d |  | 100% |  |
| 8 | 1.1.1.2.1 | Analisis de modelos en la actualidad |  | 0.5d | 2022-04-15 A | 2022-04-15 A | 6 | 100% |  | 2022-04-15 | 2022-04-15 | 0.5d |  | 100% |  |
| 9 | 1.1.1.2.2 | Busqueda de herramientas de programacion en cada Microprocesador |  | 0.5d | 2022-04-15 A | 2022-04-15 A | 8 | 100% |  | 2022-04-15 | 2022-04-15 | 0.5d |  | 100% |  |
| 10 | 1.1.1.2.3 | Recopilacion de infomacion de control vial |  | 1d | 2022-04-18 A | 2022-04-18 A | 9 | 100% |  | 2022-04-18 | 2022-04-18 | 1d |  | 100% |  |
| 11 | 1.1.1.3 | CONTROL DE ANALISIS OBJ-GRAL | milestone | 0d | 2022-04-18 A | 2022-04-18 A | 10 | 100% |  | 2022-04-18 | 2022-04-18 | 0d |  | 100% |  |
| 12 | 1.1.2 | **DISEÑO** |  | 3d | 2022-04-20 A | 2022-04-22 A |  | 100% |  | 2022-04-19 | 2022-04-22 | 4d |  | 100% |  |
| 13 | 1.1.2.1 | Definir tipo de microcontrolador IOT |  | 1d | 2022-04-20 A | 2022-04-20 A | 11 | 100% |  | 2022-04-20 | 2022-04-20 | 1d |  | 100% |  |
| 14 | 1.1.2.2 | Diseño de modelos de paradas en plano de la ciudad |  | 2d | 2022-04-21 A | 2022-04-22 A | 13 | 100% |  | 2022-04-21 | 2022-04-22 | 2d |  | 100% |  |
| 15 | 1.1.2.3 | CONTROL DE DISEÑO OBJ-GRAL | milestone | 0d | 2022-04-22 A | 2022-04-22 A | 14 | 100% |  | 2022-04-22 | 2022-04-22 | 0d |  | 100% |  |
| 16 | 1.1.3 | **EJECUCION** |  | 4d | 2022-04-25 A | 2022-04-28 A |  | 100% |  | 2022-04-25 | 2022-04-28 | 4d |  | 100% |  |
| 17 | 1.1.3.1 | Desarrollar el bosquejo de paradas deseadas para el control vehicular |  | 1d | 2022-04-25 A | 2022-04-25 A | 15 | 100% |  | 2022-04-25 | 2022-04-25 | 1d |  | 100% |  |
| 18 | 1.1.3.2 | Programar un ejemplo con el microncontrolador elegido |  | 1d | 2022-04-26 A | 2022-04-26 A | 17 | 100% |  | 2022-04-26 | 2022-04-26 | 1d |  | 100% |  |
| 19 | 1.1.3.3 | Desarrollar el armado de paradas tomadas por el sindicato |  | 2d | 2022-04-27 A | 2022-04-28 A | 18 | 100% |  | 2022-04-27 | 2022-04-28 | 2d |  | 100% | 10 |
| 20 | 1.1.3.4 | CONTROL DE CONCEPTUALIZACION | milestone | 0d | 2022-04-28 A | 2022-04-28 A | 19 | 100% |  | 2022-04-28 | 2022-04-28 | 0d |  | 100% |  |
| 21 | 1.2 | **Desarrollar una interfaz de control de VEHICULOS por inteligencia artificial que permita en monitoreo, datos reales y control por la ubicación en parada de cada vehiculo.** |  | 19.5d | 2022-04-29 A | 2022-05-26 |  | 64% | 6.94d | 2022-04-29 | 2022-05-26 | 19.5d | 33.5d | 100% |  |
| 22 | 1.2.1 | **ANALISIS** |  | 2.5d | 2022-04-29 A | 2022-05-03 |  | 76% | 0.61d | 2022-04-29 | 2022-05-03 | 2.5d | 50.5d | 100% |  |
| 23 | 1.2.1.1 | **Analisis de plataforma en desarrollo IA** |  | 2.3d | 2022-04-29 A | 2022-05-03 |  | 66% | 0.78d | 2022-04-29 | 2022-05-02 | 1.5d | 50.7d | 100% |  |
| 24 | 1.2.1.1.1 | Investigar lenguaje de programacion en vision artificial |  | 0.5d | 2022-04-29 A | 2022-04-29 A | 20 | 100% |  | 2022-04-29 | 2022-04-29 | 0.5d |  | 100% |  |
| 25 | 1.2.1.1.2 | Investigacion de otros modelos de vision artificial |  | 1d | 2022-04-29 A | 2022-05-02 | 24 | 95% | 0.05d |  |  |  | 0d | 100% |  |
| 26 | 1.2.1.1.3 | Investigar estructura de camaras IA, para su funcion |  | 1d | 2022-04-29 A | 2022-05-03 | 25 | 20% | 0.8d | 2022-04-29 | 2022-05-02 | 1d | 50.7d | 100% |  |

| ID | WBS | Task | Type | Duration | Start | Finish | Predecessors | Complete | Remaining | Baseline start | Baseline finish | Baseline duration | Total slack | Free slack | Text1 | Codigo_Doc |
| --- | --- | --- | --- | --- | --- | --- | --- | --- | --- | --- | --- | --- | --- | --- | --- | --- |
| 27 | 1.2.1.2 | **Definir materiales en prueba de vision artificial** |  | 1d | 2022-05-02 A | 2022-05-03 A |  | 100% |  | 2022-05-02 | 2022-05-03 | 1d |  |  | 100% |  |
| 28 | 1.2.1.2.1 | Investigar camaras en compatibilidad con IA |  | 0.5d | 2022-05-02 A | 2022-05-02 A | 26 | 100% |  | 2022-05-02 | 2022-05-02 | 0.5d |  |  | 100% | 11 |
| 29 | 1.2.1.2.2 | Investigar maquetacion de la vision artificial |  | 0.5d | 2022-05-03 A | 2022-05-03 A | 28 | 100% |  | 2022-05-03 | 2022-05-03 | 0.5d |  |  | 100% | 11 |
| 30 | 1.2.1.3 | CONTROL DE ANALISIS-OB1 | milestone | 0d | 2022-05-03 A | 2022-05-03 A | 29 | 100% |  | 2022-05-03 | 2022-05-03 | 0d |  |  | 100% |  |
| 31 | 1.2.2 | **DISEÑO** |  | 9d | 2022-05-03 A | 2022-05-16 |  | 81% | 1.7d | 2022-05-03 | 2022-05-17 | 10d | 0.8d |  | 100% |  |
| 32 | 1.2.2.1 | **Diseñar la estructura de la interfaz grafica con IA** |  | 4d | 2022-05-03 A | 2022-05-09 |  | 78% | 0.9d | 2022-05-03 | 2022-05-09 | 4d | 2.4d |  | 100% |  |
| 33 | 1.2.2.1.1 | Definir los modelos de diseño de vision artificial |  | 2d | 2022-05-03 A | 2022-05-05 | 30 | 75% | 0.5d | 2022-05-03 | 2022-05-05 | 2d | 1.6d | 0d | 100% |  |
| 34 | 1.2.2.1.2 | Definir el modelos de control a vehiculos |  | 2d | 2022-05-05 A | 2022-05-09 | 33 | 80% | 0.4d | 2022-05-05 | 2022-05-09 | 2d | 2.4d | 0d | 100% |  |
| 35 | 1.2.2.2 | **Diseñar la arquitectura fisica de la vision artificial** |  | 5d | 2022-05-09 A | 2022-05-16 |  | 84% | 0.8d | 2022-05-09 | 2022-05-16 | 5d | 0.8d |  | 100% |  |
| 36 | 1.2.2.2.1 | Diseño materiales en el de armado en maqueta pre-maquetada |  | 3d | 2022-05-09 A | 2022-05-12 | 34 | 80% | 0.6d | 2022-05-09 | 2022-05-12 | 3d | 1.8d | 0d | 100% | 12 |
| 37 | 1.2.2.2.2 | Diseñar la conectividad del programa con la camara |  | 2d | 2022-05-12 A | 2022-05-16 | 36 | 90% | 0.2d | 2022-05-12 | 2022-05-16 | 2d | 0.8d | 0d | 100% |  |
| 38 | 1.2.2.3 | CONTROL DE PLANIFICACION-OB1 | milestone | 0d | 2022-05-16 | 2022-05-16 | 37 |  |  | 2022-05-17 | 2022-05-17 | 0d | 0.8d | 0d | 100% |  |
| 39 | 1.2.3 | **EJECUCION** |  | 7d | 2022-05-16 A | 2022-05-25 |  | 36% | 4.46d | 2022-05-17 | 2022-05-25 | 6d | 34.5d |  | 100% |  |
| 40 | 1.2.3.1 | **Ejecucion de de la interfaz grafica con IA** |  | 4d | 2022-05-16 A | 2022-05-20 |  | 40% | 2.4d | 2022-05-17 | 2022-05-19 | 2d | 0.3d |  | 100% |  |
| 41 | 1.2.3.1.1 | Desarrollar el prototipo de DASHBOARD de la vision artificial |  | 2d | 2022-05-16 A | 2022-05-18 | 38 | 40% | 1.2d | 2022-05-17 | 2022-05-18 | 1d | 0.8d | 0d | 100% |  |
| 42 | 1.2.3.1.2 | Desarrollar el registro de cada vehiculo por camara |  | 2d | 2022-05-18 A | 2022-05-20 | 41 | 40% | 1.2d | 2022-05-18 | 2022-05-19 | 1d | 0.3d | 0d | 100% |  |
| 43 | 1.2.3.2 | **Ejecucion de armado de la vision artificial** |  | 2d | 2022-05-20 A | 2022-05-24 |  | 43% | 1.13d | 2022-05-19 | 2022-05-24 | 3d | 35.5d |  | 100% |  |
| 44 | 1.2.3.2.1 | Implementar la interfaz de todos los modelos en IA |  | 1d | 2022-05-20 A | 2022-05-23 | 42 | 30% | 0.7d | 2022-05-19 | 2022-05-20 | 1d | 35.5d | 0d | 100% |  |
| 45 | 1.2.3.2.2 | Desarrollar pruebas de deteccion de vehiculos |  | 1d | 2022-05-23 | 2022-05-24 | 44 |  |  | 2022-05-20 | 2022-05-23 | 1d | 35.5d |  | 100% |  |
| 46 | 1.2.3.2.3 | Desarrollar la prueba en ambiente real |  | 1d | 2022-05-23 A | 2022-05-24 A | 45 | 100% |  | 2022-05-23 | 2022-05-24 | 1d |  |  | 100% |  |
| 47 | 1.2.3.3 | Documentacion de desarrollo |  | 1d | 2022-05-24 | 2022-05-25 | 46 |  |  | 2022-05-24 | 2022-05-25 | 1d | 34.5d | 0d | 100% |  |
| 48 | 1.2.3.4 | CONTROL DE EJECUCION-OB1 | milestone | 0d | 2022-05-25 | 2022-05-25 | 47 |  |  | 2022-05-25 | 2022-05-25 | 0d | 34.5d |  | 100% |  |
| 49 | 1.2.4 | **CIERRE** |  | 1d | 2022-05-25 A | 2022-05-26 A |  | 100% |  | 2022-05-25 | 2022-05-26 | 1d |  |  | 100% |  |
| 50 | 1.2.4.1 | Entrega de primer objetivo finalizado |  | 1d | 2022-05-25 A | 2022-05-26 A | 48 | 100% |  | 2022-05-25 | 2022-05-26 | 1d |  |  |  |  |

| ID | WBS | Task | Type | Duration | Start | Finish | Predecessors | Complete | Baseline start | Baseline finish | Baseline duration | Text1 |
| --- | --- | --- | --- | --- | --- | --- | --- | --- | --- | --- | --- | --- |
| 51 | 1.3 | **Desarrollo de prototipo de PARADA INTELIGENTE en control sensores, dashboard dinamico y control de un dispositivo Inteligente, con el monitoreo por cada vehiculo y historial de cada proceso en una red privada.** |  | 21d | 2022-05-26 A | 2022-06-24 A |  | 100% | 2022-05-26 | 2022-06-24 | 21d | 100% |
| 52 | 1.3.1 | **ANALISIS** |  | 6d | 2022-05-26 A | 2022-06-03 A |  | 100% | 2022-05-26 | 2022-06-03 | 6d | 100% |
| 53 | 1.3.1.1 | **Busqueda de prototipos similares de terceros** |  | 1d | 2022-05-26 A | 2022-05-27 A |  | 100% | 2022-05-26 | 2022-05-27 | 1d | 100% |
| 54 | 1.3.1.1.1 | Recopilacion de informacion de paradas inteligentes en el mundo |  | 1d | 2022-05-26 A | 2022-05-27 A | 50 | 100% | 2022-05-26 | 2022-05-27 | 1d | 100% |
| 55 | 1.3.1.2 | **Analisis de requerimientos del nuevo prototipo** |  | 2d | 2022-05-27 A | 2022-05-31 A |  | 100% | 2022-05-27 | 2022-05-31 | 2d | 100% |
| 56 | 1.3.1.2.1 | Definir microcontroladores para el control IOT |  | 0.5d | 2022-05-27 A | 2022-05-27 A | 54 | 100% | 2022-05-27 | 2022-05-27 | 0.5d | 100% |
| 57 | 1.3.1.2.2 | Definir lenguaje de programacion en front-end y back-end |  | 0.5d | 2022-05-30 A | 2022-05-30 A | 56 | 100% | 2022-05-30 | 2022-05-30 | 0.5d | 100% |
| 58 | 1.3.1.2.3 | Recolectar informacion de funcionamiento de los sensores |  | 1d | 2022-05-30 A | 2022-05-31 A | 57 | 100% | 2022-05-30 | 2022-05-31 | 1d | 100% |
| 59 | 1.3.1.3 | **Recopilacion de diseños del prototipo a armar** |  | 2d | 2022-05-31 A | 2022-06-02 A |  | 100% | 2022-05-31 | 2022-06-02 | 2d | 100% |
| 60 | 1.3.1.3.1 | Definir de costos en el prototipo |  | 0.5d | 2022-05-31 A | 2022-05-31 A | 58 | 100% | 2022-05-31 | 2022-05-31 | 0.5d | 100% |
| 61 | 1.3.1.3.2 | Definir diseños en entorno real |  | 1d | 2022-06-01 A | 2022-06-01 A | 60 | 100% | 2022-06-01 | 2022-06-01 | 1d | 100% |
| 62 | 1.3.1.3.3 | Definir programas de emulacion |  | 0.5d | 2022-06-02 A | 2022-06-02 A | 61 | 100% | 2022-06-02 | 2022-06-02 | 0.5d | 100% |
| 63 | 1.3.1.4 | Documentacion de desarrollo |  | 1d | 2022-06-02 A | 2022-06-03 A | 62 | 100% | 2022-06-02 | 2022-06-03 | 1d | 100% |
| 64 | 1.3.1.5 | CONTROL DE ANALISIS-OB2 | milestone | 0d | 2022-06-03 A | 2022-06-03 A | 63 | 100% | 2022-06-03 | 2022-06-03 | 0d | 100% |
| 65 | 1.3.2 | **DISEÑO** |  | 10d | 2022-06-03 A | 2022-06-17 A |  | 100% | 2022-06-03 | 2022-06-17 | 10d | 100% |
| 66 | 1.3.2.1 | **Definicion de pruebas en la programacion logica** |  | 5d | 2022-06-03 A | 2022-06-10 A |  | 100% | 2022-06-03 | 2022-06-10 | 5d | 100% |
| 67 | 1.3.2.1.1 | Diseñar conexión entre modulo ESP y dashboard prinicpal |  | 2d | 2022-06-03 A | 2022-06-07 A | 64 | 100% | 2022-06-03 | 2022-06-07 | 2d | 100% |
| 68 | 1.3.2.1.2 | Diseñar conexiones entre sensores y actuadores |  | 2d | 2022-06-07 A | 2022-06-09 A | 67 | 100% | 2022-06-07 | 2022-06-09 | 2d | 100% |
| 69 | 1.3.2.1.3 | Diseñar modulos de prueba en cada sensor por el DASHBOARD |  | 1d | 2022-06-09 A | 2022-06-10 A | 68 | 100% | 2022-06-09 | 2022-06-10 | 1d | 100% |
| 70 | 1.3.2.2 | **Diseño del prototipo en el armado** |  | 4d | 2022-06-10 A | 2022-06-16 A |  | 100% | 2022-06-10 | 2022-06-16 | 4d | 100% |
| 71 | 1.3.2.2.1 | Diseño de conectividad entre cada sensores y actuadores |  | 2d | 2022-06-10 A | 2022-06-14 A | 69 | 100% | 2022-06-10 | 2022-06-14 | 2d | 100% |
| 72 | 1.3.2.2.2 | Diseño de enlace fisico entre componente electronicos y codigo |  | 2d | 2022-06-14 A | 2022-06-16 A | 71 | 100% | 2022-06-14 | 2022-06-16 | 2d | 100% |
| 73 | 1.3.2.3 | Documentacion de desarrollo |  | 1d | 2022-06-16 A | 2022-06-17 A | 72 | 100% | 2022-06-16 | 2022-06-17 | 1d | 100% |
| 74 | 1.3.2.4 | CONTROL DE PLANIFICACION-OB2 | milestone | 0d | 2022-06-17 A | 2022-06-17 A | 73 | 100% | 2022-06-17 | 2022-06-17 | 0d | 100% |

| ID | WBS | Task | Type | Duration | Start | Finish | Predecessors | Complete | Baseline start | Baseline finish | Baseline duration | Text1 |
| --- | --- | --- | --- | --- | --- | --- | --- | --- | --- | --- | --- | --- |
| 75 | 1.3.3 | **EJECUCION** |  | 4d | 2022-06-17 A | 2022-06-23 A |  | 100% | 2022-06-17 | 2022-06-23 | 4d | 100% |
| 76 | 1.3.3.1 | **Ejecucion del prototipo fisico** |  | 1d | 2022-06-17 A | 2022-06-20 A |  | 100% | 2022-06-17 | 2022-06-20 | 1d | 100% |
| 77 | 1.3.3.1.1 | Desarrollar los registro entre el dashboard y los sensores |  | 1d | 2022-06-17 A | 2022-06-20 A | 74 | 100% | 2022-06-17 | 2022-06-20 | 1d | 100% |
| 78 | 1.3.3.2 | **Realizar pruebas de sensores** |  | 2d | 2022-06-20 A | 2022-06-22 A |  | 100% | 2022-06-20 | 2022-06-22 | 2d | 100% |
| 79 | 1.3.3.2.1 | Diseño de respuesta en DASHBOARD en tiempo real |  | 1d | 2022-06-20 A | 2022-06-21 A | 77 | 100% | 2022-06-20 | 2022-06-21 | 1d | 100% |
| 80 | 1.3.3.2.2 | Armado de la placa de protoboard |  | 1d | 2022-06-21 A | 2022-06-22 A | 79 | 100% | 2022-06-21 | 2022-06-22 | 1d | 100% |
| 81 | 1.3.3.3 | Documentacion de desarrollo |  | 1d | 2022-06-22 A | 2022-06-23 A | 80 | 100% | 2022-06-22 | 2022-06-23 | 1d | 100% |
| 82 | 1.3.3.4 | CONTROL DE EJECUCION-OBS | milestone | 0d | 2022-06-23 A | 2022-06-23 A | 81 | 100% | 2022-06-23 | 2022-06-23 | 0d | 100% |
| 83 | 1.3.4 | **CIERRE** |  | 1d | 2022-06-23 A | 2022-06-24 A |  | 100% | 2022-06-23 | 2022-06-24 | 1d | 100% |
| 84 | 1.3.4.1 | Entrega del segundo objetivo finalizado |  | 1d | 2022-06-23 A | 2022-06-24 A | 82 | 100% | 2022-06-23 | 2022-06-24 | 1d | 100% |
| 85 | 1.4 | **Implementación con el sistema de gestion de boletas, verificando como punto de localizacion de cada vehiuclo registrado, controlando las rutas por cada tramo en el dashboard de conexión con la parada inteligente como medio de ubicación.** |  | 11.5d | 2022-06-24 A | 2022-07-11 A |  | 100% | 2022-06-24 | 2022-07-11 | 11.5d | 100% |
| 86 | 1.4.1 | **ANALISIS** |  | 5d | 2022-06-24 A | 2022-07-01 A |  | 100% | 2022-06-24 | 2022-07-01 | 5d | 100% |
| 87 | 1.4.1.1 | **Recabar informacion de rutas por el sindicato a tomar** |  | 1d | 2022-06-24 A | 2022-06-27 A |  | 100% | 2022-06-24 | 2022-06-27 | 1d | 100% |
| 88 | 1.4.1.1.1 | Busqueda de aplicación de mapeo de rutas |  | 0.5d | 2022-06-24 A | 2022-06-24 A | 84 | 100% | 2022-06-24 | 2022-06-24 | 0.5d | 100% |
| 89 | 1.4.1.1.2 | Definir puntos de rutas en cada viaje |  | 0.5d | 2022-06-27 A | 2022-06-27 A | 88 | 100% | 2022-06-27 | 2022-06-27 | 0.5d | 100% |
| 90 | 1.4.1.2 | **Definir material electronicos para control de puntos de paradas** |  | 1d | 2022-06-27 A | 2022-06-28 A |  | 100% | 2022-06-27 | 2022-06-28 | 1d | 100% |
| 91 | 1.4.1.2.1 | Definir ubicación de paradas por coordenadas |  | 0.5d | 2022-06-27 A | 2022-06-27 A | 89 | 100% | 2022-06-27 | 2022-06-27 | 0.5d | 100% |
| 92 | 1.4.1.2.2 | Definir grupos de conductores |  | 0.5d | 2022-06-28 A | 2022-06-28 A | 91 | 100% | 2022-06-28 | 2022-06-28 | 0.5d | 100% |
| 93 | 1.4.1.3 | Definir la conexión entre la vision artificial y el sistema iot de parada |  | 1d | 2022-06-28 A | 2022-06-29 A | 92 | 100% | 2022-06-28 | 2022-06-29 | 1d | 100% |
| 94 | 1.4.1.4 | Definir el maquetado final entre el DASHBOARD PRINCIPAL |  | 1d | 2022-06-29 A | 2022-06-30 A | 93 | 100% | 2022-06-29 | 2022-06-30 | 1d | 100% |
| 95 | 1.4.1.5 | Documentacion de desarrollo |  | 1d | 2022-06-30 A | 2022-07-01 A | 94 | 100% | 2022-06-30 | 2022-07-01 | 1d | 100% |
| 96 | 1.4.1.6 | CONTROL DE ANALISIS-OB3 | milestone | 0d | 2022-07-01 A | 2022-07-01 A | 95 | 100% | 2022-07-01 | 2022-07-01 | 0d | 100% |
| 97 | 1.4.2 | **DISEÑO** |  | 3d | 2022-07-01 A | 2022-07-06 A |  | 100% | 2022-07-01 | 2022-07-06 | 3d | 100% |
| 98 | 1.4.2.1 | **Diseño de hoja de rutas entre puntos de cada conductor** |  | 2d | 2022-07-01 A | 2022-07-05 A |  | 100% | 2022-07-01 | 2022-07-05 | 2d | 100% |
| 99 | 1.4.2.1.1 | Definir pruebas de cada parada |  | 1d | 2022-07-01 A | 2022-07-04 A | 96 | 100% | 2022-07-01 | 2022-07-04 | 1d | 100% |
| 100 | 1.4.2.1.2 | Definir el control ruta-conductor por cada boleta en perfil del chofer |  | 1d | 2022-07-04 A | 2022-07-05 A | 99 | 100% | 2022-07-04 | 2022-07-05 | 1d | 100% |
| 101 | 1.4.2.2 | Documentacion de desarrollo |  | 1d | 2022-07-05 A | 2022-07-06 A | 100 | 100% | 2022-07-05 | 2022-07-06 | 1d | 100% |
| 102 | 1.4.2.3 | CONTROL DE PLANIFICACION-OB3 | milestone | 0d | 2022-07-06 A | 2022-07-06 A | 101 | 100% | 2022-07-06 | 2022-07-06 | 0d | 100% |

| ID | WBS | Task | Type | Duration | Start | Finish | Predecessors | Complete | Baseline start | Baseline finish | Baseline duration | Text1 |
| --- | --- | --- | --- | --- | --- | --- | --- | --- | --- | --- | --- | --- |
| 103 | 1.4.3 | **EJECUCION** |  | 2.5d | 2022-07-06 A | 2022-07-08 A |  | 100% | 2022-07-06 | 2022-07-08 | 2.5d | 100% |
| 104 | 1.4.3.1 | **Desarrollar punto de parada en el DASHBOARD** |  | 1d | 2022-07-06 A | 2022-07-07 A |  | 100% | 2022-07-06 | 2022-07-07 | 1d | 100% |
| 105 | 1.4.3.1.1 | Desarrollo de punto de vision artificial entre las paradas |  | 0.5d | 2022-07-06 A | 2022-07-06 A | 102 | 100% | 2022-07-06 | 2022-07-06 | 0.5d | 100% |
| 106 | 1.4.3.1.2 | Desarrollo de conectividad entre el sistema |  | 0.5d | 2022-07-07 A | 2022-07-07 A | 105 | 100% | 2022-07-07 | 2022-07-07 | 0.5d | 100% |
| 107 | 1.4.3.2 | **Diseño de puntos de salida y recorrido** |  | 0.5d | 2022-07-07 A | 2022-07-07 A |  | 100% | 2022-07-07 | 2022-07-07 | 0.5d | 100% |
| 108 | 1.4.3.2.1 | Diseñar planilla de conexión entre conductor en boleta por paradas |  | 0.5d | 2022-07-07 A | 2022-07-07 A | 106 | 100% | 2022-07-07 | 2022-07-07 | 0.5d | 100% |
| 109 | 1.4.3.3 | Documentacion de desarrollo |  | 1d | 2022-07-08 A | 2022-07-08 A | 108 | 100% | 2022-07-08 | 2022-07-08 | 1d | 100% |
| 110 | 1.4.3.4 | CONTROL DE EJECUCION-OBS3 | milestone | 0d | 2022-07-08 A | 2022-07-08 A | 109 | 100% | 2022-07-08 | 2022-07-08 | 0d | 100% |
| 111 | 1.4.4 | **CIERRE** |  | 1d | 2022-07-11 A | 2022-07-11 A |  | 100% | 2022-07-11 | 2022-07-11 | 1d | 100% |
| 112 | 1.4.4.1 | Entrega del segundo objetivo finalizado |  | 1d | 2022-07-11 A | 2022-07-11 A | 110 | 100% | 2022-07-11 | 2022-07-11 | 1d | 100% |
| 113 | 1.5 | **DOCUMENTACION DE PROYECTO** |  | 1d | 2022-07-12 A | 2022-07-12 A |  | 100% | 2022-07-12 | 2022-07-12 | 1d | 100% |
| 114 | 1.5.1 | Entrega de documento y prototipo armado |  | 1d | 2022-07-12 A | 2022-07-12 A | 112 | 100% | 2022-07-12 | 2022-07-12 | 1d | 100% |
